# 6BR Villa

Schedule from Primavera P6, 2026-10-01 to 2026-11-15, A marks actual dates.

## Schedule

| ID | WBS | Activity | Type | Duration | Start | Finish | Predecessors | Complete | Remaining | Planned start | Planned finish |
| --- | --- | --- | --- | --- | --- | --- | --- | --- | --- | --- | --- |
|  | W1 | **Milestones** |  |  | 2026-10-01 | 2026-11-15 |  |  |  |  |  |
| V1001 |  | PROJECT START | milestone | 0d | 2026-10-01 A | 2026-10-01 A |  | 100% |  |  |  |
| V1042 |  | HANDOVER TO MAIN CONTRACTOR | milestone | 0d | 2026-11-15 | 2026-11-15 | V1041 |  |  |  |  |
|  | W2 | **Engineering** |  |  | 2026-10-01 | 2026-10-18 |  |  |  |  |  |
| V1002 |  | SHOP DRAWINGS AND APPROVAL - CURTAIN WALL |  | 14d | 2026-10-01 A | 2026-10-18 A | V1001 | 100% |  | 2026-10-01 | 2026-10-14 |
| V1005 |  | SHOP DRAWINGS AND APPROVAL - DOORS AND WINDOWS |  | 14d | 2026-10-01 A | 2026-10-18 A | V1001 | 100% |  | 2026-10-01 | 2026-10-14 |
| V1008 |  | SHOP DRAWINGS AND APPROVAL - LOUVERS AND PANELS |  | 16d | 2026-10-01 A | 2026-10-18 A | V1001 | 100% |  | 2026-10-01 | 2026-10-16 |
| V1011 |  | SHOP DRAWINGS AND APPROVAL - BALUSTRADE, PARTITIONS AND METALWORK |  | 16d | 2026-10-01 A | 2026-10-18 A | V1001 | 100% |  | 2026-10-01 | 2026-10-16 |
|  | W3 | **Procurement** |  |  | 2026-10-04 | 2026-10-22 |  |  |  |  |  |
| V1003 |  | MATERIAL ORDER AND DELIVERY - CURTAIN WALL |  | 12d | 2026-10-04 A | 2026-10-20 A |  | 100% |  | 2026-10-04 | 2026-10-15 |
| V1006 |  | MATERIAL ORDER AND DELIVERY - DOORS AND WINDOWS |  | 12d | 2026-10-04 A | 2026-10-19 A |  | 100% |  | 2026-10-04 | 2026-10-15 |
| V1009 |  | MATERIAL ORDER AND DELIVERY - LOUVERS AND PANELS |  | 17d | 2026-10-04 A | 2026-10-22 A |  | 100% |  | 2026-10-04 | 2026-10-20 |
| V1012 |  | MATERIAL ORDER AND DELIVERY - BALUSTRADE, PARTITIONS AND METALWORK |  | 17d | 2026-10-04 A | 2026-10-22 A |  | 100% |  | 2026-10-04 | 2026-10-20 |
|  | W4 | **Production** |  |  | 2026-10-19 | 2026-10-27 |  |  |  |  |  |
| V1007 |  | FABRICATION - DOORS AND WINDOWS |  | 7d | 2026-10-19 A | 2026-10-21 A |  | 100% |  | 2026-10-15 | 2026-10-21 |
| V1004 |  | FABRICATION - CURTAIN WALL |  | 9d | 2026-10-20 A | 2026-10-27 A |  | 100% |  | 2026-10-15 | 2026-10-23 |
| V1010 |  | FABRICATION - LOUVERS AND PANELS |  | 7d | 2026-10-22 A | 2026-10-26 A |  | 100% |  | 2026-10-20 | 2026-10-26 |
|  | W5 | **Installation / Ground floor** |  |  | 2026-10-21 | 2026-10-28 |  |  |  |  |  |
| V1015 |  | SLIDING DOORS / GROUND FLOOR |  | 2d | 2026-10-21 A | 2026-10-22 A | V1003 | 100% |  | 2026-10-19 | 2026-10-20 |
| V1018 |  | STAIRCASE WALL-MOUNTED SS HANDRAIL / GROUND FLOOR |  | 1d | 2026-10-22 A | 2026-10-22 A | V1003 | 100% |  | 2026-10-20 | 2026-10-20 |
| V1014 |  | CURTAIN WALL AND FIXED GLAZING - GLASS / GROUND FLOOR |  | 6d | 2026-10-23 | 2026-10-28 | V1003 |  |  |  |  |
| V1016 |  | HINGED DOORS / GROUND FLOOR |  | 1d | 2026-10-23 A | 2026-10-23 A | V1003 | 100% |  | 2026-10-21 | 2026-10-21 |
| V1017 |  | ALUMINIUM LOUVER DOORS / GROUND FLOOR |  | 1d | 2026-10-23 A | 2026-10-23 A | V1003 | 100% |  | 2026-10-19 | 2026-10-19 |
| V1019 |  | SHOWER GLASS PARTITION / GROUND FLOOR |  | 1d | 2026-10-24 A | 2026-10-24 A | V1003 | 100% |  | 2026-10-21 | 2026-10-21 |
| V1020 |  | ALUMINIUM CANOPY 4095 X 2750 / GROUND FLOOR |  | 1d | 2026-10-26 A | 2026-10-26 A | V1003 | 100% |  | 2026-10-22 | 2026-10-22 |
| V1021 |  | MIRRORS INCL. FIXING / GROUND FLOOR |  | 1d | 2026-10-27 A | 2026-10-27 A | V1003 | 100% |  | 2026-10-23 | 2026-10-23 |
| V1013 |  | CURTAIN WALL AND FIXED GLAZING - FRAMES / GROUND FLOOR |  | 4d | 2026-10-28 A | 2026-10-22 | V1003 | 100% | 0d | 2026-10-19 | 2026-10-22 |

| ID | WBS | Activity | Duration | Start | Finish | Predecessors | Complete | Remaining | Planned start | Planned finish |
| --- | --- | --- | --- | --- | --- | --- | --- | --- | --- | --- |
|  | W6 | **Installation / First floor** |  | 2026-10-26 | 2026-11-04 |  |  |  |  |  |
| V1022 |  | CURTAIN WALL AND FIXED GLAZING - FRAMES / FIRST FLOOR | 1d | 2026-10-26 A | 2026-10-26 A | V1003 | 100% |  |  |  |
| V1027 |  | STAIRCASE WALL-MOUNTED SS HANDRAIL / FIRST FLOOR | 1d | 2026-10-28 A | 2026-10-28 A | V1003 | 100% |  | 2026-10-26 | 2026-10-26 |
| V1023 |  | CURTAIN WALL AND FIXED GLAZING - GLASS / FIRST FLOOR | 1d | 2026-10-29 A | 2026-10-29 A | V1003 | 100% |  |  |  |
| V1028 |  | GLASS BALUSTRADE 1200 HIGH / FIRST FLOOR | 2d | 2026-10-29 A | 2026-10-30 A | V1003 | 100% |  | 2026-10-27 | 2026-10-28 |
| V1029 |  | SHOWER GLASS PARTITION / FIRST FLOOR | 1d | 2026-10-29 | 2026-10-29 | V1003 |  |  |  |  |
| V1024 |  | SLIDING DOORS / FIRST FLOOR | 4d | 2026-10-30 A | 2026-11-02 | V1003 | 100% | 0d |  |  |
| V1030 |  | MIRRORS INCL. FIXING / FIRST FLOOR | 1d | 2026-10-30 | 2026-10-30 | V1003 |  |  |  |  |
| V1025 |  | HINGED DOORS / FIRST FLOOR | 1d | 2026-11-03 | 2026-11-03 | V1003 |  |  |  |  |
| V1026 |  | SIDE-HUNG WINDOW / FIRST FLOOR | 1d | 2026-11-04 | 2026-11-04 | V1003 |  |  |  |  |
|  | W7 | **Installation / Roof** |  | 2026-11-02 | 2026-11-13 |  |  |  |  |  |
| V1031 |  | CURTAIN WALL AND FIXED GLAZING - FRAMES / ROOF | 2d | 2026-11-02 | 2026-11-03 | V1003 |  |  |  |  |
| V1035 |  | ALUMINIUM FIXED LOUVER PANELS / ROOF | 2d | 2026-11-02 | 2026-11-03 | V1003 |  |  |  |  |
| V1036 |  | ALUMINIUM ACCESS PANEL DOORS 800 X 800 / ROOF | 1d | 2026-11-04 | 2026-11-04 | V1003 |  |  |  |  |
| V1032 |  | CURTAIN WALL AND FIXED GLAZING - GLASS / ROOF | 2d | 2026-11-05 | 2026-11-06 | V1003 |  |  |  |  |
| V1033 |  | SLIDING DOORS / ROOF | 1d | 2026-11-05 | 2026-11-05 | V1003 |  |  |  |  |
| V1037 |  | GLASS BALUSTRADE 1400 HIGH / ROOF | 5d | 2026-11-05 | 2026-11-09 | V1003 |  |  |  |  |
| V1034 |  | HINGED DOORS / ROOF | 1d | 2026-11-06 | 2026-11-06 | V1003 |  |  |  |  |
| V1038 |  | SHOWER GLASS PARTITION / ROOF | 1d | 2026-11-10 | 2026-11-10 | V1003 |  |  |  |  |
| V1039 |  | ROOF ALUMINIUM LOUVER SCREEN FOR MEP / ROOF | 2d | 2026-11-11 | 2026-11-12 | V1003 |  |  |  |  |
| V1040 |  | GALVANISED STEEL LADDER FOR WATER TANK / ROOF | 1d | 2026-11-13 | 2026-11-13 | V1003 |  |  |  |  |
|  | W8 | **Handover** |  | 2026-11-12 | 2026-11-14 |  |  |  |  |  |
| V1041 |  | FINAL SNAGGING AND CLEANING | 3d | 2026-11-12 | 2026-11-14 |  |  |  |  |  |
